# 星火G3.5 1A

Schedule from a web Gantt chart, 2025-08-08 to 2025-09-18.
Every day is a working day

## Schedule

| ID | WBS | Task | Duration | Start | Finish | Predecessors | Complete | Status |
| --- | --- | --- | --- | --- | --- | --- | --- | --- |
| 2 | 1 | Layout ready | 4d | 2025-08-08 | 2025-08-11 |  | 100% |  |
| 3 | 2 | Mask in & W/S | 28d | 2025-08-12 | 2025-09-08 | 2 | 100% | waiting |
| 4 | 3 | 1st device lot F/O | 10d | 2025-09-09 | 2025-09-18 | 3 | 100% | waiting |
| 5 | 4 | Assembly | 1d | 2025-08-08 | 2025-08-08 |  |  |  |
